How a schedule from GanttProject changed from version to version. A marks actual dates.

## Version 1 (saved 2013-04-30)

Note of the change: project plan, experimental draft

| ID | WBS | Task | Duration | Start | Finish | Predecessors | Complete |
| --- | --- | --- | --- | --- | --- | --- | --- |
| 1 | 1 | **Data Model** | 28d | 2013-04-01 | 2013-05-08 |  | 68% |
| 2 |  | data model working version 1 | 23d | 2013-04-01 | 2013-05-01 |  | 70% |
| 3 |  | XML & DAO generation SEPA | 5d | 2013-05-02 | 2013-05-08 | 2 | 80% |
| 4 |  | XML & DAO generation CiviBanking | 3d | 2013-05-02 | 2013-05-06 | 2 |  |
| 5 | 2 | **API / Interfaces** | 16d | 2013-05-06 | 2013-05-27 |  |  |
| 6 |  | accounts API | 3d | 2013-05-23 | 2013-05-27 | 3 |  |
| 7 |  | payments / statements API | 1d | 2013-05-23 | 2013-05-23 | 3 |  |
| 8 |  | SEPA API? (mandates, transactions, modes...) | 1d | 2013-05-23 | 2013-05-23 | 3 |  |
| 9 |  | import / export plugin interfaces | 5d | 2013-05-06 | 2013-05-10 |  |  |
| 10 |  | matcher plugin interfaces | 5d | 2013-05-06 | 2013-05-10 |  |  |
| 11 | 3 | **CiviBanking** | 59d | 2013-04-01 | 2013-06-20 |  | 12% |
| 12 |  | design mockups | 12d | 2013-04-01 | 2013-04-16 |  | 100% |
| 13 |  | Statement Manager | 15d | 2013-05-24 | 2013-06-13 | 7 |  |
| 14 |  | Payment Manager | 10d | 2013-05-24 | 2013-06-06 | 7 |  |
| 15 |  | Payment Importer | 15d | 2013-05-24 | 2013-06-13 | 8 |  |
| 16 |  | Payment Exporter | 10d | 2013-05-24 | 2013-06-06 | 8 |  |
| 17 |  | BankAccount Manager | 15d | 2013-05-28 | 2013-06-17 | 6 |  |
| 18 |  | Matching engine | 10d | 2013-05-24 | 2013-06-06 | 7 |  |
| 19 |  | Suggestion Workbench | 20d | 2013-05-24 | 2013-06-20 | 7, 10 |  |
| 20 | 4 | **CiviSEPA** | 1d | 2013-05-24 | 2013-05-24 |  |  |
| 21 |  | mandate manager | 1d | 2013-05-24 | 2013-05-24 | 7, 8 |  |
| 22 |  | Mandate Documenter | 1d | 2013-05-24 | 2013-05-24 | 8 |  |
| 23 |  | SDD Payment Processor | 1d | 2013-05-24 | 2013-05-24 | 8 |  |
| 24 |  | Mandate Import | 1d | 2013-05-24 | 2013-05-24 | 8 |  |
| 25 |  | Batch Manager | 1d | 2013-05-24 | 2013-05-24 | 8 |  |
| 26 |  | XML Exporter | 1d | 2013-05-24 | 2013-05-24 | 8 |  |
| 27 |  | Code Sprint | 2d | 2013-05-28 | 2013-05-29 | 3, 5 |  |
| 28 | 6 | **Definition Feature Requirements** | 17d | 2013-04-01 | 2013-04-23 |  | 100% |
| 29 |  | User Stories & required Features SYSTOPIA | 17d | 2013-04-01 | 2013-04-23 |  | 100% |
| 30 |  | User & required Features delius | 17d | 2013-04-01 | 2013-04-23 |  | 100% |
| 31 |  | User & required Features SfE | 17d | 2013-04-01 | 2013-04-23 |  | 100% |

## Version 2 (saved 2013-04-30)

Note of the change: Updated project plan

Last finish 2013-06-20 → 2013-09-12 (+84d).

Changed:

| ID | Task | Start | Finish | Duration | Predecessors | Other |
| --- | --- | --- | --- | --- | --- | --- |
| 6 | data model working version 1 |  |  |  |  | resources Paul Delbar (delius) → Paul (delius) |
| 7 | XML & DAO generation SEPA |  |  |  |  | resources Paul Delbar (delius) → Paul (delius) |
| 8 | XML & DAO generation CiviBanking |  |  |  |  | resources Björn Endres (SYSTOPIA) → Björn (SYSTOPIA) |
| 9 | **API / Interfaces** |  | 2013-05-27 → 2013-06-12 (+16d) | 16d → 28d |  |  |
| 10 | accounts API |  |  |  |  | resources Björn Endres (SYSTOPIA); Xavier Dutoit → Björn (SYSTOPIA); Xavier (TttP) |
| 11 | payments / statements API |  | 2013-05-23 → 2013-06-12 (+20d) | 1d → 15d |  | resources Björn Endres (SYSTOPIA); Xavier Dutoit → Björn (SYSTOPIA); Xavier (TttP) |
| 12 | SEPA API? (mandates, transactions, modes...) |  |  |  |  | resources Olaf Buddenhagen (SfE) → Olaf (SfE) |
| 13 | import / export plugin interfaces |  |  |  |  | resources Björn Endres (SYSTOPIA) → Björn (SYSTOPIA) |
| 14 | matcher plugin interfaces |  |  |  |  | resources Björn Endres (SYSTOPIA) → Björn (SYSTOPIA) |
| 15 | **CiviBanking** |  | 2013-06-20 → 2013-09-12 (+84d) | 59d → 119d |  |  |
| 17 | Payment Importer |  |  |  |  | resources Björn Endres (SYSTOPIA) → Björn (SYSTOPIA) |
| 18 | Payment Manager | 2013-05-24 → 2013-06-14 (+21d) | 2013-06-06 → 2013-06-27 (+21d) |  | 11 → 11, 17 | resources Björn Endres (SYSTOPIA) → Björn (SYSTOPIA) |
| 19 | Matching engine | 2013-05-24 → 2013-06-28 (+35d) | 2013-06-06 → 2013-07-11 (+35d) |  | 11 → 11, 18 | resources Björn Endres (SYSTOPIA) → Björn (SYSTOPIA) |
| 20 | Suggestion Workbench | 2013-05-24 → 2013-07-12 (+49d) | 2013-06-20 → 2013-08-08 (+49d) |  | 11, 14 → 11, 14, 19 | resources Björn Endres (SYSTOPIA) → Björn (SYSTOPIA) |
| 21 | Statement Manager | 2013-05-24 → 2013-08-09 (+77d) | 2013-06-13 → 2013-08-29 (+77d) |  | 11 → 11, 20 | resources Björn Endres (SYSTOPIA) → Björn (SYSTOPIA) |
| 22 | Payment Exporter | 2013-05-24 → 2013-08-30 (+98d) | 2013-06-06 → 2013-09-12 (+98d) |  | 12 → 12, 21 | resources Björn Endres (SYSTOPIA) → Björn (SYSTOPIA) |
| 23 | BankAccount Manager |  |  |  |  | resources Olaf Buddenhagen (SfE) → Olaf (SfE) |
| 24 | **CiviSEPA** |  | 2013-05-24 → 2013-06-13 (+20d) | 1d → 15d |  |  |
| 25 | mandate manager | 2013-05-24 → 2013-06-13 (+20d) | 2013-05-24 → 2013-06-13 (+20d) |  |  | resources Olaf Buddenhagen (SfE) → Olaf (SfE) |
| 26 | Mandate Documenter |  |  |  |  | resources Olaf Buddenhagen (SfE) → Olaf (SfE) |
| 27 | SDD Payment Processor |  |  |  |  | resources Olaf Buddenhagen (SfE) → Olaf (SfE) |
| 28 | Mandate Import |  |  |  |  | resources Olaf Buddenhagen (SfE) → Olaf (SfE) |
| 29 | Batch Manager |  |  |  |  | resources Olaf Buddenhagen (SfE) → Olaf (SfE) |
| 30 | XML Exporter |  |  |  |  | resources Olaf Buddenhagen (SfE) → Olaf (SfE) |
| 31 | Code Sprint | 2013-05-28 → 2013-06-13 (+16d) | 2013-05-29 → 2013-06-14 (+16d) |  |  |  |

## Version 3 (saved 2013-05-10)

Note of the change: Updated project plan (Fabian Schuttenberg)

Last finish 2013-09-12 → 2013-09-23 (+11d).

Added:

| ID | Task | Duration | Start | Finish | Predecessors | Resources |
| --- | --- | --- | --- | --- | --- | --- |
| 7 | data model CiviBanking | 23d | 2013-04-01 | 2013-05-01 |  |  |
| 32 | finish SDD Payment Processor | 10d | 2013-09-10 | 2013-09-23 | 27, 31 | Olaf (SfE) |
| 34 | automate pre-notification | 10d | 2013-06-17 | 2013-06-28 | 33 |  |

Changed:

| ID | Task | Start | Finish | Duration | Complete | Predecessors | Other |
| --- | --- | --- | --- | --- | --- | --- | --- |
| 5 | **Data Model** |  |  |  | 68% → 47% |  |  |
| 6 | data model SEPA |  |  |  |  |  | was named data model working version 1 |
| 25 | **CiviSEPA** | 2013-05-24 → 2013-06-13 (+20d) | 2013-06-13 → 2013-09-23 (+102d) | 15d → 73d |  |  |  |
| 26 | mandate manager |  | 2013-06-13 → 2013-07-03 (+20d) | 1d → 15d |  |  |  |
| 27 | SDD Payment Processor basics | 2013-05-24 → 2013-07-04 (+41d) | 2013-05-24 → 2013-07-17 (+54d) | 1d → 10d |  | 13 → 13, 26 | was named SDD Payment Processor |
| 28 | XML Exporter | 2013-05-24 → 2013-07-18 (+55d) | 2013-05-24 → 2013-07-24 (+61d) | 1d → 5d |  | 13 → 13, 27 | resources Olaf (SfE) → Paul (delius); Olaf (SfE) |
| 29 | Batch Manager | 2013-05-24 → 2013-07-25 (+62d) | 2013-05-24 → 2013-08-12 (+80d) | 1d → 13d |  | 13 → 13, 28 |  |
| 30 | Mandate Documenter | 2013-05-24 → 2013-08-13 (+81d) | 2013-05-24 → 2013-08-26 (+94d) | 1d → 10d |  | 13 → 13, 29 |  |
| 31 | Mandate Import | 2013-05-24 → 2013-08-27 (+95d) | 2013-05-24 → 2013-09-09 (+108d) | 1d → 10d |  | 13 → 13, 30 |  |

## Version 4 (saved 2013-05-10)

Note of the change: added my project documents, modified project plan

Last finish stays 2013-09-23.

Added:

| ID | Task | Duration | Start | Finish | Resources |
| --- | --- | --- | --- | --- | --- |
| 6 | **CiviBanking extension framework** | 74d | 2013-03-01 | 2013-06-12 |  |
| 7 | CiviBanking extension | 1d | 2013-03-01 | 2013-03-01 |  |
| 10 | **CiviBanking API** | 15d | 2013-05-23 | 2013-06-12 |  |
| 15 | Payment Importer plugin architecture | 1d | 2013-05-24 | 2013-05-24 |  |
| 16 | Payment Importer plugin base class | 1d | 2013-05-24 | 2013-05-24 |  |
| 17 | **Basic Payment Importer plugins** | 1d | 2013-05-24 | 2013-05-24 |  |
| 18 | BE:CODA plugin | 1d | 2013-05-24 | 2013-05-24 | Paul (delius); Chris (delius) |
| 23 | Matcher plugin architecture | 1d | 2013-06-28 | 2013-06-28 | Björn (SYSTOPIA) |
| 24 | Matcher plugin base class | 1d | 2013-06-28 | 2013-06-28 |  |
| 27 | Payment Exporter plugin architecture | 1d | 2013-08-30 | 2013-08-30 |  |
| 28 | Payment Exporter plugin base class | 1d | 2013-08-30 | 2013-08-30 |  |
| 29 | Basic PaymentExporter plugins | 1d | 2013-08-30 | 2013-08-30 |  |
| 31 | **CiviSDD extension framework** | 60d | 2013-03-01 | 2013-05-23 |  |
| 32 | CiviSDD extension | 1d | 2013-03-01 | 2013-03-01 |  |
| 35 | **CiviSDD API** | 1d | 2013-05-23 | 2013-05-23 |  |
| 37 | CiviSDDLogic class | 1d | 2013-03-01 | 2013-03-01 |  |
| 41 | **SDD Payment Processor** | 58d | 2013-07-04 | 2013-09-23 |  |

Removed: 5 Data Model; 10 API / Interfaces; 14 import / export plugin interfaces; 15 matcher plugin interfaces

Changed:

| ID | Task | Start | Finish | Duration | Complete | Predecessors | Other |
| --- | --- | --- | --- | --- | --- | --- | --- |
| 5 | **CiviBanking** | 2013-04-01 → 2013-03-01 (-31d) | 2013-09-12 → 2013-08-30 (-13d) | 119d → 131d | 12% → 11% |  |  |
| 8 | CiviBanking data model |  |  |  |  |  | was named data model CiviBanking; resources none → Paul (delius) |
| 9 | CiviBanking XML & DAO generation |  |  |  |  |  | was named XML & DAO generation CiviBanking |
| 14 | **Payment Importer** |  | 2013-06-13 → 2013-05-24 (-20d) | 15d → 1d |  |  |  |
| 22 | **Matching engine** |  | 2013-07-11 → 2013-06-28 (-13d) | 10d → 1d |  |  |  |
| 25 | Suggestion Workbench |  |  |  |  | 12, matcher plugin interfaces, 22 → 12, 22 |  |
| 26 | **Payment Exporter** |  | 2013-09-12 → 2013-08-30 (-13d) | 10d → 1d |  |  |  |
| 30 | **CiviSDD** | 2013-06-13 → 2013-03-01 (-104d) |  | 73d → 147d | 0% → 22% |  | was named CiviSEPA |
| 33 | CiviSDD data model |  |  |  |  |  | was named data model SEPA |
| 34 | CiviSDD XML & DAO generation |  |  |  |  |  | was named XML & DAO generation SEPA; resources Paul (delius) → Xavier (TttP) |
| 38 | Mandate Importer |  |  |  |  |  | was named Mandate Import |
| 39 | Mandate Manager |  |  |  |  |  | was named mandate manager |
| 46 | Code Sprint | 2013-06-13 → 2013-05-09 (-35d) | 2013-06-14 → 2013-05-10 (-35d) |  |  | 34, API / Interfaces → 34 |  |

## Version 5 (saved 2013-09-09)

Last finish 2013-09-23 → 2013-07-12 (-73d).

Added:

| ID | Task | Duration | Start | Finish |
| --- | --- | --- | --- | --- |
| 6 | **CiviBanking design** | 33d | 2013-03-01 | 2013-04-16 |
| 8 | workflow diagrams | 1d | 2013-03-01 | 2013-03-01 |
| 20 | Generic CSV Payment Explorer plugin | 1d | 2013-06-10 | 2013-06-10 |
| 22 | DE:format plugin | 1d | 2013-06-10 | 2013-06-10 |
| 34 | Generic CSV Payment Exporter plugin | 1d | 2013-06-19 | 2013-06-19 |
| 36 | **CiviSDD design** | 5d | 2013-05-01 | 2013-05-07 |
| 37 | Workflow diagrams | 5d | 2013-05-01 | 2013-05-07 |

Changed:

| ID | Task | Start | Finish | Duration | Complete | Predecessors | Other |
| --- | --- | --- | --- | --- | --- | --- | --- |
| 5 | **CiviBanking** |  | 2013-08-30 → 2013-07-12 (-49d) | 131d → 96d | 11% → 9% |  |  |
| 7 | UI design mockups |  |  |  |  |  | was named design mockups; resources none → Björn (SYSTOPIA) |
| 9 | **CiviBanking extension framework** | 2013-03-01 → 2013-04-17 (+47d) |  | 74d → 41d | 21% → 32% | none → 6 |  |
| 10 | CiviBanking extension | 2013-03-01 → 2013-04-17 (+47d) | 2013-03-01 → 2013-04-17 (+47d) |  |  |  |  |
| 11 | CiviBanking data model | 2013-04-01 → 2013-04-17 (+16d) | 2013-05-01 → 2013-05-07 (+6d) | 23d → 15d | 25% → 60% |  |  |
| 12 | CiviBanking XML & DAO generation | 2013-05-02 → 2013-05-22 (+20d) | 2013-05-06 → 2013-05-24 (+18d) |  |  | 40 → 11, 40 |  |
| 13 | **CiviBanking API** |  |  |  |  | none → 12 |  |
| 14 | accounts API | 2013-05-23 → 2013-05-31 (+8d) | 2013-05-27 → 2013-06-04 (+8d) |  |  |  |  |
| 16 | **Payment Importer** | 2013-05-24 → 2013-06-06 (+13d) | 2013-05-24 → 2013-06-10 (+17d) | 1d → 3d |  | 43 → 9, 43 |  |
| 17 | Payment Importer plugin architecture | 2013-05-24 → 2013-06-06 (+13d) | 2013-05-24 → 2013-06-06 (+13d) |  |  |  |  |
| 18 | Payment Importer plugin base class | 2013-05-24 → 2013-06-07 (+14d) | 2013-05-24 → 2013-06-07 (+14d) |  |  | none → 17 |  |
| 19 | **Basic Payment Importer plugins** | 2013-05-24 → 2013-06-10 (+17d) | 2013-05-24 → 2013-06-10 (+17d) |  |  | none → 18 |  |
| 21 | BE:CODA plugin | 2013-05-24 → 2013-06-10 (+17d) | 2013-05-24 → 2013-06-10 (+17d) |  |  |  |  |
| 23 | BankAccount Manager | 2013-05-28 → 2013-06-06 (+9d) | 2013-06-17 → 2013-06-26 (+9d) |  |  | 14 → 9, 14 |  |
| 24 | Payment Manager | 2013-06-14 → 2013-06-17 (+3d) | 2013-06-27 → 2013-06-28 (+1d) |  |  | 15, 16 → 9 |  |
| 25 | Statement Manager | 2013-08-09 → 2013-06-17 (-53d) | 2013-08-29 → 2013-07-05 (-55d) |  |  | 15, 29 → 9 |  |
| 26 | **Matching engine** | 2013-06-28 → 2013-06-17 (-11d) | 2013-06-28 → 2013-06-17 (-11d) |  |  | 15, 24 → 9 |  |
| 27 | Matcher plugin architecture | 2013-06-28 → 2013-06-17 (-11d) | 2013-06-28 → 2013-06-17 (-11d) |  |  |  |  |
| 28 | Matcher plugin base class | 2013-06-28 → 2013-06-17 (-11d) | 2013-06-28 → 2013-06-17 (-11d) |  |  |  |  |
| 29 | Suggestion Workbench | 2013-07-12 → 2013-06-17 (-25d) | 2013-08-08 → 2013-07-12 (-27d) |  |  | 15, 26 → 9 |  |
| 30 | **Payment Exporter** | 2013-08-30 → 2013-06-17 (-74d) | 2013-08-30 → 2013-06-19 (-72d) | 1d → 3d |  | 25, 43 → 9 |  |
| 31 | Payment Exporter plugin architecture | 2013-08-30 → 2013-06-17 (-74d) | 2013-08-30 → 2013-06-17 (-74d) |  |  |  |  |
| 32 | Payment Exporter plugin base class | 2013-08-30 → 2013-06-18 (-73d) | 2013-08-30 → 2013-06-18 (-73d) |  |  | none → 31 |  |
| 33 | **Basic Payment Exporter plugins** | 2013-08-30 → 2013-06-19 (-72d) | 2013-08-30 → 2013-06-19 (-72d) |  |  | none → 32 | was named Basic PaymentExporter plugins |
| 35 | **CiviSDD** | 2013-03-01 → 2013-05-01 (+61d) | 2013-09-23 → 2013-07-10 (-75d) | 147d → 51d |  |  |  |
| 38 | **CiviSDD extension framework** | 2013-03-01 → 2013-05-14 (+74d) | 2013-05-23 → 2013-05-29 (+6d) | 60d → 12d |  | none → 36 |  |
| 39 | CiviSDD extension | 2013-03-01 → 2013-05-14 (+74d) | 2013-03-01 → 2013-05-14 (+74d) |  |  |  |  |
| 40 | CiviSDD data model | 2013-04-01 → 2013-05-15 (+44d) | 2013-05-01 → 2013-05-21 (+20d) | 23d → 5d |  | none → 39 |  |
| 41 | CiviSDD XML & DAO generation | 2013-05-02 → 2013-05-22 (+20d) | 2013-05-08 → 2013-05-28 (+20d) |  |  |  |  |
| 42 | **CiviSDD API** | 2013-05-23 → 2013-05-29 (+6d) | 2013-05-23 → 2013-05-29 (+6d) |  |  | none → 41 |  |
| 43 | SEPA API (mandates, transactions, modes...) | 2013-05-23 → 2013-05-29 (+6d) | 2013-05-23 → 2013-05-29 (+6d) |  |  | 41 → none | was named SEPA API? (mandates, transactions, modes...) |
| 44 | CiviSDDLogic class | 2013-03-01 → 2013-05-22 (+82d) | 2013-03-01 → 2013-05-22 (+82d) |  |  | none → 40 |  |
| 45 | Mandate Manager | 2013-06-13 → 2013-05-23 (-21d) | 2013-07-03 → 2013-06-12 (-21d) |  |  | 15, 43 → 38 |  |
| 46 | **SDD Payment Processor** | 2013-07-04 → 2013-06-13 (-21d) | 2013-09-23 → 2013-07-10 (-75d) | 58d → 20d |  | none → 38 |  |
| 47 | SDD Payment Processor basics | 2013-07-04 → 2013-06-13 (-21d) | 2013-07-17 → 2013-06-26 (-21d) |  |  |  |  |
| 48 | finish SDD Payment Processor | 2013-09-10 → 2013-06-27 (-75d) | 2013-09-23 → 2013-07-10 (-75d) |  |  |  |  |
| 49 | Batch Manager | 2013-07-25 → 2013-05-23 (-63d) | 2013-08-12 → 2013-06-10 (-63d) |  |  | 43, 50 → 38 |  |
| 50 | XML Exporter | 2013-07-18 → 2013-06-11 (-37d) | 2013-07-24 → 2013-06-17 (-37d) |  |  | 43, 47 → 49 |  |
| 51 | Mandate Documenter | 2013-08-13 → 2013-06-13 (-61d) | 2013-08-26 → 2013-06-26 (-61d) |  |  | 43, 49 → 45 |  |
| 52 | Mandate Importer | 2013-08-27 → 2013-06-13 (-75d) | 2013-09-09 → 2013-06-26 (-75d) |  |  | 43, 51 → 45 |  |
| 53 | Code Sprint | 2013-05-09 → 2013-05-29 (+20d) | 2013-05-10 → 2013-05-30 (+20d) |  |  | 41 → none |  |
| 54 | automate pre-notification | 2013-06-17 → 2013-06-26 (+9d) | 2013-06-28 → 2013-07-09 (+11d) |  |  | 53 → none |  |
